# GFA26SE111 PickleVerse

Schedule from MS Project XML.
FPT University

## Schedule

| ID | WBS | Task | Type | Duration | Predecessors |
| --- | --- | --- | --- | --- | --- |
| 1 | 1 | Calendar start - Chưa xác nhận | milestone | 0d |  |
| 2 | 2 | **Proposal work packages** |  |  |  |
| 3 | 2.1 | P01 Project foundation (Weeks 1-2) |  | 10d | 1 |
| 4 | 2.2 | P02 Tutorial and training (Weeks 3-4) |  | 10d | 3 |
| 5 | 2.3 | P03 Online singles (Weeks 5-7) |  | 15d | 4 |
| 6 | 2.4 | P04 Bot, rating and shot data (Weeks 8-9) |  | 10d | 5 |
| 7 | 2.5 | P05 Coaching and doubles (Weeks 10-11) |  | 10d | 6 |
| 8 | 2.6 | P06 Admin and integration (Weeks 12-13) |  | 10d | 7 |
| 9 | 2.7 | P07 Release and guides (Weeks 14-14) |  | 5d | 8 |
| 10 | 3 | **Course target weeks** |  |  |  |
| 11 | 3.1 | M01 Project introduction (end of Week 1) | milestone | 0d | 1FS+5d |
| 12 | 3.2 | M02 Project plan (end of Week 2) | milestone | 0d | 1FS+10d |
| 13 | 3.3 | M03 Overall requirements (end of Week 3) | milestone | 0d | 1FS+15d |
| 14 | 3.4 | M04 Overall software design (end of Week 5) | milestone | 0d | 1FS+25d |
| 15 | 3.5 | M05 Software Package 1 (end of Week 7) | milestone | 0d | 1FS+35d |
| 16 | 3.6 | M06 Software Package 2 (end of Week 9) | milestone | 0d | 1FS+45d |
| 17 | 3.7 | M07 Software Package 3 (end of Week 11) | milestone | 0d | 1FS+55d |
| 18 | 3.8 | M08 Full software package (end of Week 13) | milestone | 0d | 1FS+65d |
| 19 | 3.9 | M09 Software user guides (end of Week 14) | milestone | 0d | 1FS+70d |
| 20 | 3.10 | M10 Final package and defense (end of Week 15) | milestone | 0d | 1FS+75d |
| 21 | 4 | **Parallel checks and package readiness** |  |  |  |
| 22 | 4.1 | A01 Write project introduction |  | 4d | 1 |
| 23 | 4.2 | R01 Ready for Project introduction | milestone | 0d | 22 |
| 24 | 4.3 | A02 Write plan and first risks |  | 5d | 1FS+4d |
| 25 | 4.4 | R02 Ready for Project plan | milestone | 0d | 24, 23 |
| 26 | 4.5 | A03 Review SRS and set tracking |  | 5d | 1FS+9d |
| 27 | 4.6 | R03 Ready for Overall requirements | milestone | 0d | 26, 25 |
| 28 | 4.7 | A04 Check design, test plan and first demo |  | 8d | 1FS+15d |
| 29 | 4.8 | R04 Ready for Overall software design | milestone | 0d | 28, 27 |
| 30 | 4.9 | A05 Check first build and update reports |  | 5d | 1FS+30d, 5FF |
| 31 | 4.10 | R05 Ready for Software Package 1 | milestone | 0d | 30, 5, 29 |
| 32 | 4.11 | A06 Check second build and update reports |  | 5d | 1FS+40d, 6FF |
| 33 | 4.12 | R06 Ready for Software Package 2 | milestone | 0d | 32, 6, 31 |
| 34 | 4.13 | A07 Check third build and update reports |  | 5d | 1FS+50d, 7FF |
| 35 | 4.14 | R07 Ready for Software Package 3 | milestone | 0d | 34, 7, 33 |
| 36 | 4.15 | A08 Run final integration and system checks |  | 5d | 1FS+60d, 8FF |
| 37 | 4.16 | R08 Ready for Full software package | milestone | 0d | 36, 8, 35 |
| 38 | 4.17 | A09 Prepare user and admin guides |  | 5d | 1FS+65d, 9FF |
| 39 | 4.18 | R09 Ready for Software user guides | milestone | 0d | 38, 9, 37 |
| 40 | 4.19 | A10 Prepare final reports and defense |  | 5d | 1FS+70d, 9FF |
| 41 | 4.20 | R10 Ready for Final package and defense | milestone | 0d | 40, 9, 39 |

Notes:
- 1: Weeks are relative. Enter the confirmed semester start date before using calendar dates.
- 2: Source: Doc/Proposal/PickleVerse_Capstone_Proposal.md
- 3: Unity, ball and court rules, backend, login and build setup.
- 4: Lessons, drills, stars, XP and progress.
- 5: Dedicated play, room codes, matching and history.
- 6: Bot levels, Elo and game data capture.
- 7: Tips, drill suggestions, doubles, ranks and challenges.
- 8: Accounts, lessons, live matches, analytics and system tests.
- 9: Deployment work, player tests, fixes and guides.
- 10: Fixed targets relative to project start. Source: Doc/Project_report/swp490_capstone_project_student_guide.md
- 11: Report 1. Calendar date: Chưa xác nhận.
- 12: Report 2, effort, risks and schedule. Calendar date: Chưa xác nhận.
- 13: Initial Report 3. Update Reports 1–2 and tracking. Calendar date: Chưa xác nhận.
- 14: Initial Report 4, test plan and demo. Update earlier reports. Calendar date: Chưa xác nhận.
- 15: First package, source and schema. Update requirements, design, tests and tracking. Calendar date: Chưa xác nhận.
- 16: Second package and updated evidence. Calendar date: Chưa xác nhận.
- 17: Third package and updated evidence. Calendar date: Chưa xác nhận.
- 18: System tests, source, schema, results and open defects. Calendar date: Chưa xác nhận.
- 19: Report 6. Update tracking. Calendar date: Chưa xác nhận.
- 20: Report 7, software, source, test results and slides. Calendar date: Chưa xác nhận.
- 21: Compare each R gate with the matching M target. An R gate moves with its required work.
- 22: Proposed work. Keep test evidence and open findings.
- 23: Readiness gate. Compare with M01 in Week 1.
- 24: Proposed work. Keep test evidence and open findings.
- 25: Readiness gate. Compare with M02 in Week 2.
- 26: Proposed work. Keep test evidence and open findings.
- 27: Readiness gate. Compare with M03 in Week 3.
- 28: Proposed work. Keep test evidence and open findings.
- 29: Readiness gate. Compare with M04 in Week 5.
- 30: Proposed work. Keep test evidence and open findings.
- 31: Readiness gate. Compare with M05 in Week 7.
- 32: Proposed work. Keep test evidence and open findings.
- 33: Readiness gate. Compare with M06 in Week 9.
- 34: Proposed work. Keep test evidence and open findings.
- 35: Readiness gate. Compare with M07 in Week 11.
- 36: Proposed work. Keep test evidence and open findings.
- 37: Readiness gate. Compare with M08 in Week 13.
- 38: Proposed work. Keep test evidence and open findings.
- 39: Readiness gate. Compare with M09 in Week 14.
- 40: Proposed work. Keep test evidence and open findings.
- 41: Readiness gate. Compare with M10 in Week 15.
